# Schedule

Schedule from MS Project, 2017-12-17 to 2018-05-28, A marks actual dates.

## Calendars

- Standard: Mon-Fri 08:00-12:00, 13:00-17:00; Sat-Sun off. Exceptions (off unless hours are given): 2017-12-01 to 2018-07-01 08:00-12:00, 13:00-17:00.

## Resources

| Resource |
| --- |
| Matty Baba Allos |
| Thao Tran |
| William Boyd |
| Kestutis Saltonas |

## Schedule

| ID | WBS | Task | Duration | Start | Finish | Predecessors | Complete | Remaining | Total slack | Constraint | Resources | Work | Actual work |
| --- | --- | --- | --- | --- | --- | --- | --- | --- | --- | --- | --- | --- | --- |
| 1 | 1 | **Project ACIS** | 162d | 2017-12-17 A | 2018-05-28 |  | 55% | 72.76d | 0d |  |  | 19129.5h | 9577.78h |
| 2 | 1.1 | **Get Started** | 26.88d | 2017-12-17 A | 2018-01-12 A |  | 100% |  |  |  |  | 117h | 117h |
| 3 | 1.1.1 | Create GitHub Repo | 1d | 2017-12-17 A | 2017-12-17 A |  | 100% |  |  | finish no earlier than 2017-12-17 | Matty Baba Allos | 8h | 8h |
| 4 | 1.1.2 | Create GitHub Wiki | 1d | 2017-12-17 A | 2017-12-17 A | 3 | 100% |  |  | start no earlier than 2017-12-17 | Matty Baba Allos | 8h | 8h |
| 5 | 1.1.3 | Create GitHub Tasks | 1d | 2017-12-17 A | 2017-12-17 A | 4 | 100% |  |  | start no earlier than 2017-12-17 | Matty Baba Allos | 8h | 8h |
| 6 | 1.1.4 | **Meet With Adviser** | 0.88d | 2017-12-19 A | 2017-12-19 A |  | 100% |  |  |  | Kestutis Saltonas; Matty Baba Allos; Thao Tran; William Boyd | 37h | 37h |
| 7 | 1.1.4.1 | Add Meeting Notes | 1d | 2017-12-19 A | 2017-12-19 A |  | 100% |  |  | start no earlier than 2017-12-19 | Matty Baba Allos | 8h | 8h |
| 8 | 1.1.5 | **Meet With Sponsor** | 2.88d | 2018-01-10 A | 2018-01-12 A |  | 100% |  |  |  |  | 56h | 56h |
| 9 | 1.1.5.1 | Preparing Slides And Questions | 2d | 2018-01-10 A | 2018-01-11 A |  | 100% |  |  | start no earlier than 2018-01-10 | Kestutis Saltonas; Matty Baba Allos; Thao Tran; William Boyd | 48h | 48h |
| 10 | 1.1.5.2 | Add Meeting Notes | 1d | 2018-01-12 A | 2018-01-12 A | 9 | 100% |  |  | start no earlier than 2018-01-12 | Thao Tran; William Boyd | 8h | 8h |
| 11 | 1.2 | **Plan** | 28.12d | 2018-01-26 A | 2018-02-23 A |  | 100% |  |  |  |  | 691h | 691h |
| 12 | 1.2.1 | **Requirements** | 6d | 2018-01-26 A | 2018-01-31 A |  | 100% |  |  |  | Kestutis Saltonas; Matty Baba Allos; Thao Tran; William Boyd | 128h | 128h |
| 13 | 1.2.1.1 | Write Project Schedule Draft | 1d | 2018-01-26 A | 2018-01-26 A |  | 100% |  |  | start no earlier than 2018-01-26 |  |  |  |
| 14 | 1.2.1.2 | Review Project Schedule Draft | 1d | 2018-01-27 A | 2018-01-27 A | 13 | 100% |  |  |  |  |  |  |
| 15 | 1.2.1.3 | Revise Project Schedule Draft | 1d | 2018-01-28 A | 2018-01-28 A | 14 | 100% |  |  |  |  |  |  |
| 16 | 1.2.1.4 | Review Revised Project Schedule | 1d | 2018-01-29 A | 2018-01-29 A | 15 | 100% |  |  |  |  |  |  |
| 17 | 1.2.1.5 | Approve Project Schedule | 1d | 2018-01-30 A | 2018-01-30 A | 16 | 100% |  |  |  |  |  |  |
| 18 | 1.2.1.6 | Submit Project Schedule | 1d | 2018-01-31 A | 2018-01-31 A | 17 | 100% |  |  |  |  |  |  |
| 19 | 1.2.2 | **Project Schedule** | 2d | 2018-02-18 A | 2018-02-20 A |  | 100% |  |  |  | Matty Baba Allos | 96h | 96h |
| 20 | 1.2.2.1 | Write Project Schedule Draft | 1d | 2018-02-18 A | 2018-02-18 A |  | 100% |  |  | start no earlier than 2018-02-18 | Matty Baba Allos | 8h | 8h |
| 21 | 1.2.2.2 | Review Project Schedule Draft | 1d | 2018-02-18 A | 2018-02-19 A | 20 | 100% |  |  |  | Matty Baba Allos | 8h | 8h |
| 22 | 1.2.2.3 | Revise Project Schedule Draft | 1d | 2018-02-19 A | 2018-02-19 A | 21 | 100% |  |  |  | Matty Baba Allos | 8h | 8h |
| 23 | 1.2.2.4 | Review Revised Project Schedule | 1d | 2018-02-19 A | 2018-02-19 A | 22 | 100% |  |  |  | Matty Baba Allos | 8h | 8h |
| 24 | 1.2.2.5 | Approve Project Schedule | 1d | 2018-02-19 A | 2018-02-20 A | 23 | 100% |  |  |  | Matty Baba Allos | 8h | 8h |
| 25 | 1.2.2.6 | Submit Project Schedule | 1d | 2018-02-20 A | 2018-02-20 A | 24 | 100% |  |  |  | Matty Baba Allos | 8h | 8h |

| ID | WBS | Task | Duration | Start | Finish | Predecessors | Complete | Remaining | Total slack | Free slack | Constraint | Resources | Work | Actual work |
| --- | --- | --- | --- | --- | --- | --- | --- | --- | --- | --- | --- | --- | --- | --- |
| 26 | 1.2.3 | **Block Diagram** | 6.12d | 2018-02-17 A | 2018-02-23 A |  | 100% |  |  |  |  | Matty Baba Allos; Thao Tran; William Boyd | 467h | 467h |
| 27 | 1.2.3.1 | Create High Level Block Diagram | 1.12d | 2018-02-17 A | 2018-02-17 A |  | 100% |  |  |  |  | William Boyd; Thao Tran | 16h | 16h |
| 28 | 1.2.3.2 | Create Component Level Block Diagram | 1d | 2018-02-17 A | 2018-02-18 A | 27 | 100% |  |  |  |  | William Boyd; Thao Tran | 8h | 8h |
| 29 | 1.2.3.3 | Create Motor Block Diagram | 0.62d | 2018-02-18 A | 2018-02-18 A | 28 | 100% |  |  |  |  | William Boyd; Thao Tran | 8h | 8h |
| 30 | 1.2.3.4 | Create Sensor Sensor Block Diagram | 1d | 2018-02-18 A | 2018-02-19 A | 29 | 100% |  |  |  |  | William Boyd; Thao Tran | 8h | 8h |
| 31 | 1.2.3.5 | Create Processor Block Diagram | 0.62d | 2018-02-19 A | 2018-02-19 A | 30 | 100% |  |  |  |  | William Boyd; Thao Tran | 8h | 8h |
| 32 | 1.2.3.6 | Create Lights Block Diagram | 1d | 2018-02-19 A | 2018-02-20 A | 31 | 100% |  |  |  |  | William Boyd; Thao Tran | 8h | 8h |
| 33 | 1.2.3.7 | Create Software Block Diagram | 0.62d | 2018-02-20 A | 2018-02-20 A | 32 | 100% |  |  |  |  | William Boyd; Thao Tran | 8h | 8h |
| 34 | 1.2.3.8 | Review Block Diagrams | 1d | 2018-02-20 A | 2018-02-21 A | 33 | 100% |  |  |  |  | Matty Baba Allos | 8h | 8h |
| 35 | 1.2.3.9 | Revise Block Diagrams | 1.88d | 2018-02-21 A | 2018-02-21 A | 34 | 100% |  |  |  |  | William Boyd; Thao Tran | 16h | 16h |
| 36 | 1.2.3.10 | Approve Block Diagrams | 2d | 2018-02-21 A | 2018-02-22 A | 35 | 100% |  |  |  |  | Matty Baba Allos | 16h | 16h |
| 37 | 1.2.3.11 | Submit Block Diagrams | 1.12d | 2018-02-22 A | 2018-02-23 A | 36 | 100% |  |  |  |  | Matty Baba Allos; Thao Tran; William Boyd | 24h | 24h |
| 38 | 1.3 | **Barcode Detection** | 32d | 2018-02-01 A | 2018-03-04 |  | 87% | 4.03d | 84d |  |  | Kestutis Saltonas; Matty Baba Allos | 1120.5h | 303.5h |
| 39 | 1.3.1 | Research Barcode Detection Libraries | 10d | 2018-02-01 A | 2018-02-09 A |  | 100% |  |  |  | start no earlier than 2018-02-01 | Kestutis Saltonas; Matty Baba Allos | 88h | 88h |
| 40 | 1.3.2 | Prototype OpenCV Barcode Detection | 3.88d | 2018-02-09 A | 2018-02-11 A | 39 | 100% |  |  |  |  | Kestutis Saltonas; Matty Baba Allos | 32h | 32h |
| 41 | 1.3.3 | Finalize OpenCV Barcode Detection | 2d | 2018-03-03 | 2018-03-04 | 40 |  |  | 84d |  | start no earlier than 2018-03-03 | Kestutis Saltonas | 16h |  |
| 42 | 1.4 | **Image Stitching** | 59d | 2018-01-13 A | 2018-03-12 |  | 88% | 6.81d | 76d |  |  | Kestutis Saltonas | 680h | 601.54h |
| 43 | 1.4.1 | Research Methods To Use OpenCV For Image Stitching | 21d | 2018-01-13 A | 2018-02-02 A |  | 100% |  |  |  | start no earlier than 2018-01-13 | Kestutis Saltonas | 168h | 168h |
| 44 | 1.4.2 | Prototype OpenCV Image Stitching | 2d | 2018-02-10 A | 2018-02-11 A | 43 | 100% |  |  |  | start no earlier than 2018-02-10 | Kestutis Saltonas | 16h | 16h |
| 45 | 1.4.3 | Finalize OpenCV Image Stitching | 3d | 2018-03-10 | 2018-03-12 | 44 |  |  | 76d |  | start no earlier than 2018-03-10 | Kestutis Saltonas | 24h |  |
| 46 | 1.5 | **Defect Detection** | 91d | 2018-01-03 | 2018-04-03 |  |  |  | 54d |  |  | Kestutis Saltonas | 808h |  |
| 47 | 1.5.1 | Research OpenCV Defect Detection | 2d | 2018-01-03 | 2018-01-04 |  |  |  | 135d | 0d | start no earlier than 2018-01-03 | Kestutis Saltonas | 16h |  |
| 48 | 1.5.2 | Prototype OpenCV Defect Detection | 5d | 2018-01-05 | 2018-01-09 | 47 |  |  | 135d | 81d |  | Kestutis Saltonas | 40h |  |
| 49 | 1.5.3 | Finalize OpenCV Defect Detection | 3d | 2018-04-01 | 2018-04-03 | 48 |  |  | 54d |  | start no earlier than 2018-04-01 | Kestutis Saltonas | 24h |  |

| ID | WBS | Task | Duration | Start | Finish | Predecessors | Complete | Remaining | Total slack | Free slack | Constraint | Resources | Work | Actual work |
| --- | --- | --- | --- | --- | --- | --- | --- | --- | --- | --- | --- | --- | --- | --- |
| 50 | 1.6 | **Main Application** | 6d | 2018-03-29 A | 2018-04-04 |  | 89% | 0.67d | 54d |  |  | Matty Baba Allos | 288h | 256h |
| 51 | 1.6.1 | Research What Control Should Main Application Have | 2d | 2018-03-29 A | 2018-03-30 A |  | 100% |  |  |  | start no earlier than 2018-03-29 | Matty Baba Allos | 16h | 16h |
| 52 | 1.6.2 | Design Main Application | 6d | 2018-03-30 A | 2018-04-01 A | 51 | 100% |  |  |  |  | Matty Baba Allos | 48h | 48h |
| 53 | 1.6.3 | Design The Different components Of The Application | 1d | 2018-04-01 A | 2018-04-01 A | 52 | 100% |  |  |  |  | Matty Baba Allos | 8h | 8h |
| 54 | 1.6.4 | Design Config File | 1d | 2018-04-01 A | 2018-04-01 A | 53 | 100% |  |  |  |  | Matty Baba Allos | 8h | 8h |
| 55 | 1.6.5 | Design The Interface Between The Classes | 1d | 2018-04-01 A | 2018-04-02 A | 54 | 100% |  |  |  |  | Matty Baba Allos | 8h | 8h |
| 56 | 1.6.6 | Prototype Main Application | 5d | 2018-04-02 A | 2018-04-03 A | 55 | 100% |  |  |  |  | Matty Baba Allos | 40h | 40h |
| 57 | 1.6.7 | Finalize Main Application | 2d | 2018-04-03 | 2018-04-04 | 56 |  |  | 54d |  |  | Matty Baba Allos | 16h |  |
| 58 | 1.7 | **Magazine** | 18.75d | 2018-03-28 A | 2018-04-15 |  | 75% | 4.69d | 42.25d |  |  | Matty Baba Allos; William Boyd | 779h | 595.25h |
| 59 | 1.7.1 | Research Magazine Design | 2d | 2018-03-28 A | 2018-03-29 A |  | 100% |  |  |  | start no earlier than 2018-03-28 | Matty Baba Allos; William Boyd | 23h | 23h |
| 60 | 1.7.2 | Design The Magazine | 1d | 2018-03-29 A | 2018-03-30 A | 59 | 100% |  |  |  |  | Matty Baba Allos; William Boyd | 32h | 32h |
| 61 | 1.7.3 | Design Safety Locks | 1d | 2018-03-30 A | 2018-03-31 A | 60 | 100% |  |  |  |  | Matty Baba Allos; William Boyd | 9h | 9h |
| 62 | 1.7.4 | Design CPU Holding Frame | 1d | 2018-03-31 A | 2018-03-31 A | 61 | 100% |  |  |  |  | Matty Baba Allos; William Boyd | 8h | 8h |
| 63 | 1.7.5 | Design Magazine Movement | 1d | 2018-03-31 A | 2018-03-31 A | 62 | 100% |  |  |  |  | Matty Baba Allos; William Boyd | 15h | 15h |
| 64 | 1.7.6 | Design Magazine Loading Mechanism | 1d | 2018-03-31 A | 2018-04-01 A | 63 | 100% |  |  |  |  | Matty Baba Allos; William Boyd | 9h | 9h |
| 65 | 1.7.7 | Research Magazine Parts | 2d | 2018-04-01 A | 2018-04-01 A | 64 | 100% |  |  |  |  | Matty Baba Allos; William Boyd | 16h | 16h |
| 66 | 1.7.8 | Order Magazine Parts | 1d | 2018-04-01 A | 2018-04-02 | 65 | 99% | 0d | 10.19d | 7d |  | Matty Baba Allos; William Boyd | 8h | 8h |
| 67 | 1.7.9 | Prototype Magazine | 5d | 2018-04-09 A | 2018-04-13 | 66 | 66% | 1.69d | 42.25d | 0d | start no earlier than 2018-04-09 | Matty Baba Allos; William Boyd | 47h | 33.5h |
| 68 | 1.7.10 | Finalize Magazine | 2.75d | 2018-04-13 | 2018-04-15 | 67 |  |  | 42.25d |  |  | Matty Baba Allos; William Boyd | 23h |  |
| 69 | 1.8 | **Frame** | 88d | 2018-01-27 A | 2018-04-25 |  | 71% | 25.88d | 33d |  |  | Matty Baba Allos; Thao Tran | 4344h | 3066.35h |
| 70 | 1.8.1 | Design The Frame | 4d | 2018-01-27 A | 2018-01-28 A |  | 100% |  |  |  | start no earlier than 2018-01-27 | Matty Baba Allos | 32h | 32h |
| 71 | 1.8.2 | Research Frame Parts | 1d | 2018-01-28 A | 2018-01-29 A | 70 | 100% |  |  |  |  | Matty Baba Allos | 8h | 8h |
| 72 | 1.8.3 | Order Frame Parts | 2d | 2018-01-29 A | 2018-01-29 A | 71 | 100% |  |  |  |  | Matty Baba Allos | 16h | 16h |
| 73 | 1.8.4 | Prototype Frame | 5d | 2018-03-05 A | 2018-03-07 A |  | 100% |  |  |  | start no earlier than 2018-03-05 | Thao Tran | 40h | 40h |
| 74 | 1.8.5 | Finalize Frame Build | 5d | 2018-04-23 | 2018-04-25 |  |  |  | 33d |  | start no earlier than 2018-04-23 | Thao Tran | 40h |  |

| ID | WBS | Task | Duration | Start | Finish | Predecessors | Complete | Remaining | Total slack | Free slack | Constraint | Resources | Work | Actual work |
| --- | --- | --- | --- | --- | --- | --- | --- | --- | --- | --- | --- | --- | --- | --- |
| 75 | 1.9 | **Lighting** | 11d | 2018-04-06 | 2018-04-16 |  |  |  | 41d |  |  | Matty Baba Allos; Kestutis Saltonas | 417h |  |
| 76 | 1.9.1 | Research Lighting | 1d | 2018-04-06 | 2018-04-06 |  |  |  | 50d | 0d | start no earlier than 2018-04-06 | Matty Baba Allos; Kestutis Saltonas | 15h |  |
| 77 | 1.9.2 | Design Lighting | 2d | 2018-04-06 | 2018-04-07 | 76 |  |  | 50d | 0d |  | Matty Baba Allos; Kestutis Saltonas | 17h |  |
| 78 | 1.9.3 | Order Lighting Parts | 1d | 2018-04-07 | 2018-04-08 | 77 |  |  | 50d |  |  | Matty Baba Allos; Kestutis Saltonas | 8h |  |
| 79 | 1.9.4 | Prototype Lighting Parts | 2d | 2018-04-14 | 2018-04-15 |  |  |  | 41d | 0d | start no earlier than 2018-04-14 | Matty Baba Allos; Kestutis Saltonas | 23h |  |
| 80 | 1.9.5 | Finalize Lighting | 2d | 2018-04-15 | 2018-04-16 | 79 |  |  | 41d |  |  | Matty Baba Allos; Kestutis Saltonas | 17h |  |
| 81 | 1.10 | **Enclosure** | 9d | 2018-04-01 A | 2018-04-10 |  | 81% | 1.69d | 48d |  |  | Thao Tran | 280h | 227.5h |
| 82 | 1.10.1 | Research Enclosure Material | 1d | 2018-04-01 A | 2018-04-01 A |  | 100% |  |  |  | start no earlier than 2018-04-01 | Thao Tran | 8h | 8h |
| 83 | 1.10.2 | Design Enclosure | 3d | 2018-04-01 A | 2018-04-02 A | 82 | 100% |  |  |  |  | Thao Tran | 24h | 24h |
| 84 | 1.10.3 | Order Enclosure Material | 1d | 2018-04-08 A | 2018-04-08 A | 83 | 100% |  |  |  | start no earlier than 2018-04-08 | Thao Tran | 8h | 8h |
| 85 | 1.10.4 | Prototype Enclosure | 2d | 2018-04-09 A | 2018-04-10 | 84 | 75% | 0.5d | 48d | 0d | start no earlier than 2018-04-09 | Thao Tran | 16h | 12h |
| 86 | 1.10.5 | Finalize Enclosure | 1d | 2018-04-10 | 2018-04-10 | 85 |  |  | 48d |  |  | Thao Tran | 8h |  |
| 87 | 1.11 | **Motor** | 104d | 2018-01-01 A | 2018-04-14 |  | 74% | 27.37d | 43d |  |  | William Boyd; Matty Baba Allos | 3465h | 2553.16h |
| 88 | 1.11.1 | Research Arduino Motor Control | 5d | 2018-01-01 A | 2018-01-05 A |  | 100% |  |  |  | start no earlier than 2018-01-01 | William Boyd | 40h | 40h |
| 89 | 1.11.2 | Design Stepper Motor Placement | 1d | 2018-01-28 A | 2018-01-28 A | 88 | 100% |  |  |  | start no earlier than 2018-01-28 | Matty Baba Allos | 8h | 8h |
| 90 | 1.11.3 | Choose Motors | 2d | 2018-01-29 A | 2018-01-30 A | 89 | 100% |  |  |  | start no earlier than 2018-01-29 | Matty Baba Allos | 16h | 16h |
| 91 | 1.11.4 | Order Motors | 1d | 2018-01-30 A | 2018-01-30 A | 90 | 100% |  |  |  | start no earlier than 2018-01-30 | Matty Baba Allos | 8h | 8h |
| 92 | 1.11.5 | Prototype Motor Drivers | 5d | 2018-04-05 A | 2018-04-09 A | 91 | 100% |  |  |  | start no earlier than 2018-04-05 | William Boyd | 40h | 40h |
| 93 | 1.11.6 | Finalize Motor Driver | 5d | 2018-04-10 | 2018-04-14 | 92 |  |  | 43d |  | finish no earlier than 2018-02-19 | William Boyd | 40h |  |
| 94 | 1.12 | **Image Capturing** | 9.88d | 2018-03-28 | 2018-04-06 |  |  |  | 51.12d |  |  | Matty Baba Allos; Kestutis Saltonas | 350h |  |
| 95 | 1.12.1 | Research Camera | 1d | 2018-03-28 | 2018-03-28 |  |  |  | 58.12d | 6.12d | start no earlier than 2018-03-28 | Matty Baba Allos; Kestutis Saltonas | 15h |  |
| 96 | 1.12.2 | Order Camera | 1d | 2018-04-04 | 2018-04-04 | 95 |  |  | 51.25d | 0.12d | start no earlier than 2018-04-04 | Matty Baba Allos; Kestutis Saltonas | 9h |  |
| 97 | 1.12.3 | Finalize Image Capturing | 2d | 2018-04-05 | 2018-04-06 | 96 |  |  | 51.12d |  | start no earlier than 2018-04-05 | Matty Baba Allos; Kestutis Saltonas | 23h |  |
| 98 | 1.13 | **Communication Between Arduino And Pc** | 2.88d | 2018-04-25 A | 2018-04-27 A |  | 100% |  |  |  |  | Thao Tran | 112h | 112h |
| 99 | 1.13.1 | Design The Protocol Between Main Application And Arduino | 3d | 2018-04-25 A | 2018-04-26 A |  | 100% |  |  |  | start no earlier than 2018-04-25 | Thao Tran | 24h | 24h |
| 100 | 1.13.2 | Prototype Communication Between Arduino And Pc | 2d | 2018-04-26 A | 2018-04-27 A | 99 | 100% |  |  |  |  | Thao Tran | 16h | 16h |
| 101 | 1.13.3 | Finalize Communication Between Pc And Arduino | 2d | 2018-04-27 A | 2018-04-27 A | 100 | 100% |  |  |  |  | Thao Tran | 16h | 16h |

| ID | WBS | Task | Duration | Start | Finish | Predecessors | Complete | Remaining | Total slack | Free slack | Constraint | Resources | Work | Actual work |
| --- | --- | --- | --- | --- | --- | --- | --- | --- | --- | --- | --- | --- | --- | --- |
| 102 | 1.14 | **Power Supply** | 18d | 2018-04-07 A | 2018-04-25 |  | 63% | 6.75d | 33d |  |  | Matty Baba Allos; William Boyd | 544h | 338h |
| 103 | 1.14.1 | Calculate Power Requirements Based On Parts | 2d | 2018-04-07 A | 2018-04-08 A |  | 100% |  |  |  | start no earlier than 2018-04-07 | Matty Baba Allos; William Boyd | 23h | 23h |
| 104 | 1.14.2 | Research Power Supply | 2d | 2018-04-08 A | 2018-04-09 A | 103 | 100% |  |  |  | start no earlier than 2018-03-24 | Matty Baba Allos; William Boyd | 17h | 17h |
| 105 | 1.14.3 | Order Power Supply | 1d | 2018-04-16 A | 2018-04-16 A | 104 | 100% |  |  |  | start no earlier than 2018-04-16 | Matty Baba Allos; William Boyd | 8h | 8h |
| 106 | 1.14.4 | Test Power Supply | 2d | 2018-04-23 | 2018-04-24 | 105 |  |  | 33d | 0d | start no earlier than 2018-04-23 | Matty Baba Allos; William Boyd | 23h |  |
| 107 | 1.14.5 | Finalize Power Supply | 1d | 2018-04-24 | 2018-04-25 | 106 |  |  | 33d |  |  | Matty Baba Allos; William Boyd | 9h |  |
| 108 | 1.15 | **Safety Locks** | 12d | 2018-04-23 | 2018-05-04 |  |  |  | 23d |  |  | William Boyd | 136h |  |
| 109 | 1.15.1 | Research Safety Locks | 2d | 2018-04-23 | 2018-04-24 |  |  |  | 30d | 0d | start no earlier than 2018-04-23 | William Boyd | 16h |  |
| 110 | 1.15.2 | Order Safety Locks Parts | 1d | 2018-04-25 | 2018-04-25 | 109 |  |  | 30d | 7d |  | William Boyd | 8h |  |
| 111 | 1.15.3 | Prototype Safety Locks | 1d | 2018-05-03 | 2018-05-03 | 110 |  |  | 23d | 0d | start no earlier than 2018-05-03 | William Boyd | 8h |  |
| 112 | 1.15.4 | Finalize Safety Locks | 1d | 2018-05-04 | 2018-05-04 | 111 |  |  | 23d |  |  | William Boyd | 8h |  |
| 113 | 1.16 | **Sensors** | 5d | 2018-03-18 A | 2018-03-22 |  | 80% | 1d | 66d |  |  | William Boyd | 80h | 64h |
| 114 | 1.16.1 | Research Sensors | 2d | 2018-03-18 A | 2018-03-19 A |  | 100% |  |  |  | start no earlier than 2018-03-18 | William Boyd | 16h | 16h |
| 115 | 1.16.2 | Order Sensors | 1d | 2018-03-20 A | 2018-03-20 A | 114 | 100% |  |  |  |  | William Boyd | 8h | 8h |
| 116 | 1.16.3 | Prototype Sensors Software | 1d | 2018-03-21 A | 2018-03-21 A | 115 | 100% |  |  |  |  | William Boyd | 8h | 8h |
| 117 | 1.16.4 | Finalize Sensors | 1d | 2018-03-22 | 2018-03-22 | 116 |  |  | 66d |  |  | William Boyd | 8h |  |
| 118 | 1.17 | **First Term Project Assessment** | 2.25d | 2018-03-23 A | 2018-03-25 A |  | 100% |  |  |  |  | Matty Baba Allos; Kestutis Saltonas; Thao Tran; William Boyd | 208h | 208h |
| 119 | 1.17.1 | Write First Term Project Assessment Draft | 1.12d | 2018-03-23 A | 2018-03-23 A |  | 100% |  |  |  | start no earlier than 2018-03-23 | Matty Baba Allos; Kestutis Saltonas; Thao Tran; William Boyd | 32h | 32h |
| 120 | 1.17.2 | Review First Term Project Assessment Draft | 0.5d | 2018-03-23 A | 2018-03-24 A | 119 | 100% |  |  |  |  | Matty Baba Allos; Kestutis Saltonas; Thao Tran; William Boyd | 8h | 8h |
| 121 | 1.17.3 | Revise First Term Project Assessment Draft | 0.25d | 2018-03-24 A | 2018-03-24 A | 120 | 100% |  |  |  |  | Matty Baba Allos; Kestutis Saltonas; Thao Tran; William Boyd | 8h | 8h |
| 122 | 1.17.4 | Review First Term Project Assessment Document | 0.38d | 2018-03-24 A | 2018-03-24 A | 121 | 100% |  |  |  |  | Matty Baba Allos; Kestutis Saltonas; Thao Tran; William Boyd | 8h | 8h |
| 123 | 1.17.5 | Approve First Term Project Assessment Document | 0.25d | 2018-03-24 A | 2018-03-24 A | 122 | 100% |  |  |  |  | Matty Baba Allos; Kestutis Saltonas; Thao Tran; William Boyd | 8h | 8h |
| 124 | 1.17.6 | Submit First Term Project Assessment Document | 0.5d | 2018-03-24 A | 2018-03-25 A | 123 | 100% |  |  |  |  | Matty Baba Allos; Kestutis Saltonas; Thao Tran; William Boyd | 8h | 8h |
| 125 | 1.18 | **Test** | 3d | 2018-04-30 | 2018-05-03 |  |  |  | 25d |  |  | Matty Baba Allos | 128h |  |
| 126 | 1.18.1 | Unit Testing | 2d | 2018-04-30 | 2018-05-01 |  |  |  | 25d | 0d | start no earlier than 2018-04-30 | Matty Baba Allos | 16h |  |
| 127 | 1.18.2 | UI Testing | 2d | 2018-05-01 | 2018-05-01 | 126 |  |  | 25d | 0d |  | Matty Baba Allos | 16h |  |
| 128 | 1.18.3 | Integration Testing | 2d | 2018-05-01 | 2018-05-02 | 127 |  |  | 25.12d | 0d |  | Matty Baba Allos | 16h |  |
| 129 | 1.18.4 | System Testing | 2d | 2018-05-02 | 2018-05-03 | 128 |  |  | 25d |  |  | Matty Baba Allos | 16h |  |

| ID | WBS | Task | Type | Duration | Start | Finish | Predecessors | Complete | Remaining | Total slack | Free slack | Constraint | Resources | Work | Actual work |
| --- | --- | --- | --- | --- | --- | --- | --- | --- | --- | --- | --- | --- | --- | --- | --- |
| 130 | 1.19 | **Product Documentation** |  | 5d | 2018-05-06 | 2018-05-10 |  |  |  | 17d |  |  | Matty Baba Allos; Kestutis Saltonas; Thao Tran; William Boyd | 450h |  |
| 131 | 1.19.1 | Write Product Documentation Draft |  | 1.12d | 2018-05-06 | 2018-05-06 |  |  |  | 17d | 0d | start no earlier than 2018-05-06 | Matty Baba Allos; Kestutis Saltonas; Thao Tran; William Boyd | 32h |  |
| 132 | 1.19.2 | Review Product Documentation Draft |  | 2d | 2018-05-06 | 2018-05-07 | 131 |  |  | 17d | 0d |  | Matty Baba Allos; Kestutis Saltonas; Thao Tran; William Boyd | 32h |  |
| 133 | 1.19.3 | Revise Product Documentation Draft |  | 2d | 2018-05-07 | 2018-05-08 | 132 |  |  | 17d | 0d |  | Matty Baba Allos; Kestutis Saltonas; Thao Tran; William Boyd | 32h |  |
| 134 | 1.19.4 | Review Product Documentation Schedule |  | 2d | 2018-05-08 | 2018-05-09 | 133 |  |  | 17d | 0d |  | Matty Baba Allos; Kestutis Saltonas; Thao Tran; William Boyd | 32h |  |
| 135 | 1.19.5 | Approve Product Documentation |  | 2d | 2018-05-09 | 2018-05-10 | 134 |  |  | 17d | 0d |  | Matty Baba Allos; Kestutis Saltonas; Thao Tran; William Boyd | 32h |  |
| 136 | 1.19.6 | Submit Product Documentation | milestone | 0d | 2018-05-10 | 2018-05-10 | 135 |  |  | 17d |  |  | Matty Baba Allos; Kestutis Saltonas; Thao Tran; William Boyd |  |  |
| 137 | 1.20 | **Project Report** |  | 10d | 2018-05-14 | 2018-05-23 |  |  |  | 4d |  |  | Matty Baba Allos; Kestutis Saltonas; Thao Tran; William Boyd | 930h |  |
| 138 | 1.20.1 | Write Project Report Draft |  | 3d | 2018-05-14 | 2018-05-15 |  |  |  | 4d | 0d | start no earlier than 2018-05-14 | Matty Baba Allos; Kestutis Saltonas; Thao Tran; William Boyd | 64h |  |
| 139 | 1.20.2 | Review Project Report Draft |  | 3.88d | 2018-05-15 | 2018-05-17 | 138 |  |  | 4d | 0d |  | Matty Baba Allos; Kestutis Saltonas; Thao Tran; William Boyd | 64h |  |
| 140 | 1.20.3 | Revise Project Report Draft |  | 3.88d | 2018-05-17 | 2018-05-19 | 139 |  |  | 4d | 0d |  | Matty Baba Allos; Kestutis Saltonas; Thao Tran; William Boyd | 64h |  |
| 141 | 1.20.4 | Review Project Report Document |  | 3.88d | 2018-05-19 | 2018-05-21 | 140 |  |  | 4d | 0d |  | Matty Baba Allos; Kestutis Saltonas; Thao Tran; William Boyd | 64h |  |
| 142 | 1.20.5 | Approve Project Report Document |  | 3.88d | 2018-05-21 | 2018-05-23 | 141 |  |  | 4d | 0d |  | Matty Baba Allos; Kestutis Saltonas; Thao Tran; William Boyd | 64h |  |
| 143 | 1.20.6 | Submit Project Report Document | milestone | 0d | 2018-05-23 | 2018-05-23 | 142 |  |  | 4d |  |  | Matty Baba Allos; Kestutis Saltonas; Thao Tran; William Boyd |  |  |
| 144 | 1.21 | **Final Project Assessment** |  | 13d | 2018-05-14 | 2018-05-26 |  |  |  | 1d |  |  | Matty Baba Allos; Kestutis Saltonas; Thao Tran; William Boyd | 1218h |  |
| 145 | 1.21.1 | Write Final Term Project Assessment Draft |  | 8d | 2018-05-14 | 2018-05-18 |  |  |  | 1d | 0d | start no earlier than 2018-05-14 | Matty Baba Allos; Kestutis Saltonas; Thao Tran; William Boyd | 160h |  |
| 146 | 1.21.2 | Review Final Term Project Assessment Draft |  | 3.88d | 2018-05-18 | 2018-05-20 | 145 |  |  | 1d | 0d |  | Matty Baba Allos; Kestutis Saltonas; Thao Tran; William Boyd | 64h |  |
| 147 | 1.21.3 | Revise Final Term Project Assessment Draft |  | 3.88d | 2018-05-20 | 2018-05-22 | 146 |  |  | 1d | 0d |  | Matty Baba Allos; Kestutis Saltonas; Thao Tran; William Boyd | 64h |  |
| 148 | 1.21.4 | Review Final Term Project Assessment Document |  | 3.88d | 2018-05-22 | 2018-05-24 | 147 |  |  | 1d | 0d |  | Matty Baba Allos; Kestutis Saltonas; Thao Tran; William Boyd | 64h |  |
| 149 | 1.21.5 | Approve Final Term Project Assessment Document |  | 3.88d | 2018-05-24 | 2018-05-26 | 148 |  |  | 1d | 0d |  | Matty Baba Allos; Kestutis Saltonas; Thao Tran; William Boyd | 64h |  |
| 150 | 1.21.6 | Submit Final Term Project Assessment Document | milestone | 0d | 2018-05-26 | 2018-05-26 | 149 |  |  | 1d |  |  | Matty Baba Allos; Kestutis Saltonas; Thao Tran; William Boyd |  |  |
| 151 | 1.22 | **Project Poster** |  | 27d | 2018-05-01 A | 2018-05-28 |  | 22% | 21.05d | 0d |  |  | Matty Baba Allos; Kestutis Saltonas; Thao Tran; William Boyd | 1984h | 444.48h |
| 152 | 1.22.1 | Design Project Poster |  | 3d | 2018-05-01 A | 2018-05-02 A |  | 100% |  |  |  | start no earlier than 2018-05-01 | Matty Baba Allos; Kestutis Saltonas; Thao Tran; William Boyd | 64h | 64h |
| 153 | 1.22.2 | Do Project Poster |  | 7d | 2018-05-02 | 2018-05-06 | 152 |  |  | 19d | 0d |  | Matty Baba Allos; Kestutis Saltonas; Thao Tran; William Boyd | 128h |  |
| 154 | 1.22.3 | Revise Project Poster |  | 2d | 2018-05-06 | 2018-05-07 | 153 |  |  | 19d | 0d |  | Matty Baba Allos; Kestutis Saltonas; Thao Tran; William Boyd | 32h |  |
| 155 | 1.22.4 | Review Project Poster |  | 1d | 2018-05-07 | 2018-05-08 | 154 |  |  | 19d | 0d |  | Matty Baba Allos; Kestutis Saltonas; Thao Tran; William Boyd | 16h |  |
| 156 | 1.22.5 | Approve Project Poster |  | 0.62d | 2018-05-08 | 2018-05-08 | 155 |  |  | 19d |  |  | Matty Baba Allos; Kestutis Saltonas; Thao Tran; William Boyd | 16h |  |
| 157 | 1.22.6 | Submit Project Poster | milestone | 0d | 2018-05-28 | 2018-05-28 | 156 |  |  | 0d |  | start no earlier than 2018-05-28 | Matty Baba Allos; Kestutis Saltonas; Thao Tran; William Boyd |  |  |
